# TopCoder Software Project Plan

Schedule from MS Project, 2004-01-27 to 2006-09-07, A marks actual dates.
TopCoder Software Project Plan
TopCoder

## Calendars

- Standard: Mon-Fri 08:00-12:00, 13:00-17:00; Sat-Sun off.

## Resources

| Resource |
| --- |
| Project Manager |
| Component Architect |
| Information Architect |
| Component Manager |
| Application Architect |
| Application Assembler 1 |
| Deployment Engineer 1 |
| Customer |
| Member |
| Review |
| Application Assembler 4 |
| Application Assembler 3 |
| Application Assembler 2 |
| Deployment Engineer 3 |
| Deployment Engineer 2 |
| Deployment Engineer |
| Deployment Engineer/Project Manager |
| Javier |
| Greg Paul |
| Dave Messinger |
| Lorie Norman |
| Tony Jefts |
| test case participants |
| All Teams |
| All Captains |
| Reviewer3 |
| Reviewer2 |
| Reviewer1 |
| Assembly Manager |
| Architect |
| DE |
| Review Team |
| Kim Ruhl |
| Petar Canic |
| WishingBone |
| Brian Chang |
| Dean Brodrick |

## Schedule

| ID | WBS | Task | Type | Duration | Start | Finish | Predecessors | Complete | Remaining | Baseline start | Baseline finish | Baseline duration | Total slack | Constraint | Resources | Work | Actual work |
| --- | --- | --- | --- | --- | --- | --- | --- | --- | --- | --- | --- | --- | --- | --- | --- | --- | --- |
| 1 | 1 | **TopCoder Online Review/Scorecard Project** |  | 683d? | 2004-01-27 A | 2006-09-07 |  | 23% | 528.47d? |  |  |  | 0d |  |  | 2640h | 629.2h |
| 2 | 1.1 | Kick Off Meeting |  | 0.33d? | 2006-03-02 | 2006-03-02 |  |  |  |  |  |  | 135.67d | start no earlier than 2006-03-02 | Dave Messinger; Lorie Norman; Tony Jefts | 8h |  |
| 3 | 1.2 | Creation of TopCoder Application Forum |  | 1d | 2006-03-02 A | 2006-03-03 A | 2 | 100% |  |  |  |  |  | start no earlier than 2005-06-29 | Lorie Norman | 8h | 8h |
| 4 | 1.3 | Assign Client Permissions to Forums |  | 1d | 2006-03-02 A | 2006-03-02 A |  | 100% |  |  |  |  |  | start no earlier than 2005-06-29 | Lorie Norman | 8h | 8h |
| 5 | 1.4 | Create SVN module for Application |  | 1d | 2005-06-29 A | 2005-06-29 A |  | 100% |  |  |  |  |  | start no earlier than 2005-06-29 | Lorie Norman | 8h | 8h |
| 6 | 1.5 | Key Stakeholder Meetings |  | 1.5d | 2006-03-06 A | 2006-03-07 A |  | 100% |  |  |  |  |  | start no earlier than 2006-03-06 | Greg Paul; Javier; Dave Messinger; Lorie Norman | 48h | 48h |
| 7 | 1.6 | **Application Specification** |  | 33.5d? | 2006-03-02 A | 2006-04-18 A |  | 100% |  | 2004-01-20 | 2004-02-11 | 17d? |  |  |  | 280h | 280h |
| 8 | 1.6.1 | **Requirement Specification Draft** |  | 1d | 2006-03-03 A | 2006-03-03 A |  | 100% |  | 2004-01-20 | 2004-01-22 | 3d? |  |  | Lorie Norman | 8h | 8h |
| 9 | 1.6.1.1 | Fill in Scope |  | 1d | 2006-03-03 A | 2006-03-03 A |  | 100% |  |  |  |  |  | start no earlier than 2006-03-03 |  |  |  |
| 10 | 1.6.2 | Review Meeting |  | 0.5d | 2006-03-06 A | 2006-03-06 A | 8 | 100% |  | 2004-01-23 | 2004-01-23 | 1d? |  |  | Project Manager; Customer | 8h | 8h |
| 11 | 1.6.3 | Create/Update Use Cases |  | 2d | 2006-03-02 A | 2006-03-03 A |  | 100% |  |  |  |  |  | start no earlier than 2006-03-02 |  |  |  |
| 12 | 1.6.4 | **Module Specification** |  | 18.5d | 2006-03-09 A | 2006-04-04 A |  | 100% |  | 2004-01-23 | 2004-02-11 | 14d? |  |  |  | 80h | 80h |
| 13 | 1.6.4.1 | Create/Update Activity Diagram |  | 10d | 2006-03-15 A | 2006-03-28 A | 10 | 100% |  |  |  |  |  | finish no earlier than 2006-03-28 | Project Manager | 80h | 80h |
| 14 | 1.6.4.2 | Fill in Logic Requirements for use cases and activity diagrams |  | 5d | 2006-03-09 A | 2006-04-03 A | 13 | 100% |  |  |  |  |  |  |  |  |  |
| 15 | 1.6.4.3 | Review Meeting |  | 1d | 2006-04-04 A | 2006-04-04 A | 14 | 100% |  |  |  |  |  | start no earlier than 2006-03-10 |  |  |  |
| 16 | 1.6.5 | Create Site Map |  | 1d? | 2006-04-04 A | 2006-04-04 A |  | 100% |  |  |  |  |  | start no earlier than 2006-04-04 |  |  |  |
| 17 | 1.6.6 | Review Meeting |  | 0.5d | 2006-04-03 A | 2006-04-03 A |  | 100% |  |  |  |  |  | start no earlier than 2006-04-03 |  |  |  |
| 18 | 1.6.7 | Prototype Revision 1 |  | 14d | 2006-03-20 A | 2006-04-06 A |  | 100% |  |  |  |  |  | finish no earlier than 2006-04-06 | Kim Ruhl | 112h | 112h |
| 19 | 1.6.8 | Architecture Diagram Draft |  | 1d | 2006-03-22 A | 2006-03-23 A | 17 | 100% |  | 2004-01-27 | 2004-01-28 | 2d? |  | start no earlier than 2005-01-19 | Project Manager | 8h | 8h |
| 20 | 1.6.9 | Fill in Technical Requirements |  | 0.5d | 2006-04-04 A | 2006-04-04 A | 19 | 100% |  |  |  |  |  | start no earlier than 2006-04-04 |  |  |  |
| 21 | 1.6.10 | Review Meeting |  | 2d | 2006-04-07 A | 2006-04-10 A | 18 | 100% |  | 2004-01-30 | 2004-01-30 | 1d? |  | start no earlier than 2006-04-07 | Project Manager; Customer | 32h | 32h |
| 22 | 1.6.11 | Prototype Revision 2 Review |  | 2d | 2006-04-11 A | 2006-04-12 A | 21 | 100% |  |  |  |  |  | start no earlier than 2006-04-11 |  |  |  |
| 23 | 1.6.12 | Complete QA Plan |  | 1d | 2006-04-05 A | 2006-04-05 A | 12 | 100% |  |  |  |  |  |  |  |  |  |
| 24 | 1.6.13 | Review Meeting |  | 0.5d | 2006-04-13 A | 2006-04-13 A | 22 | 100% |  | 2004-02-06 | 2004-02-06 | 1d? |  |  | Project Manager; Customer | 8h | 8h |
| 25 | 1.6.14 | Update Final Specification Deliverables |  | 2d | 2006-04-13 A | 2006-04-17 A | 24 | 100% |  | 2004-02-09 | 2004-02-10 | 2d? |  | start no earlier than 2006-04-06 | Project Manager | 16h | 16h |
| 26 | 1.6.15 | Final Specification Presentation | milestone | 1d? | 2006-04-17 A | 2006-04-18 A | 25 | 100% |  | 2004-02-11 | 2004-02-11 | 1d? |  |  | Project Manager | 8h | 8h |

Notes:
- 12: This will be iterated over multiple times for each module.

| ID | WBS | Task | Type | Duration | Start | Finish | Predecessors | Complete | Remaining | Total slack | Free slack | Constraint | Resources | Work | Actual work |
| --- | --- | --- | --- | --- | --- | --- | --- | --- | --- | --- | --- | --- | --- | --- | --- |
| 27 | 1.7 | **Application Architecture** |  | 30.5d | 2006-04-18 A | 2006-05-30 |  | 39% | 18.6d | 72d |  |  |  | 656h | 277.2h |
| 28 | 1.7.1 | Test Scenarios |  | 10d | 2006-05-08 A | 2006-05-19 A | 23 | 100% |  |  |  | start no earlier than 2006-05-08 | Dean Brodrick | 80h | 80h |
| 29 | 1.7.2 | Update Site Map |  | 5d | 2006-04-18 A | 2006-04-25 A | 7 | 100% |  |  |  |  | Kim Ruhl; Petar Canic | 80h | 80h |
| 30 | 1.6.3 | Physical Data Model Definition |  | 5d | 2006-04-18 A | 2006-04-25 A | 7 | 100% |  |  |  | finish no earlier than 2005-02-04 | WishingBone | 40h | 40h |
| 31 | 1.7.4 | **UML Diagrams** |  | 27d | 2006-04-20 A | 2006-05-28 |  | 20% | 21.68d | 74d |  |  |  | 392h | 77.2h |
| 32 | 1.6.2 | Component Sequence Diagrams |  | 27d | 2006-04-20 A | 2006-05-28 |  | 25% | 20.35d | 74d |  | finish no earlier than 2006-05-28 | WishingBone | 216h | 53.2h |
| 33 | 1.6.1 | Component Interface Diagram |  | 20d | 2006-05-01 A | 2006-05-28 |  | 15% | 17d | 74d |  | finish no earlier than 2006-05-28 | WishingBone | 160h | 24h |
| 34 | 1.7.4.3 | Component Diagram |  | 2d | 2006-05-25 | 2006-05-28 |  |  |  | 74d |  | finish no earlier than 2006-05-28 | WishingBone | 16h |  |
| 35 | 1.6.5 | Component Specifications | milestone | 5d | 2006-05-22 | 2006-05-26 |  |  |  | 72d | 0d | finish no earlier than 2006-05-26 | Component Architect | 40h |  |
| 36 | 1.7.6 | Application Design Specification |  | 1d | 2006-05-29 | 2006-05-29 | 35 |  |  | 72d | 0d | finish no earlier than 2006-05-29 | Component Architect | 8h |  |
| 37 | 1.7.7 | Review |  | 1d | 2006-05-30 | 2006-05-30 | 36 |  |  | 72d |  |  | Project Manager; Component Architect | 16h |  |
| 38 | 1.8 | **Component Production** |  | 31d | 2006-05-25 | 2006-07-06 |  |  |  | 0d |  |  |  | 1040h |  |
| 39 | 1.8.1 | **File Upload 2.0** |  | 26d | 2006-05-25 | 2006-06-29 |  |  |  | 5d |  |  |  | 208h |  |
| 40 | 1.8.1.1 | Design Posting |  | 6d | 2006-05-25 | 2006-06-01 |  |  |  | 5d | 0d | start no earlier than 2006-05-25 | Member | 48h |  |
| 41 | 1.8.1.2 | Design Review |  | 4d | 2006-06-02 | 2006-06-07 | 40 |  |  | 5d | 0d | finish no earlier than 2005-03-21 | Member | 32h |  |
| 42 | 1.8.1.3 | Design Final Fixes |  | 2d | 2006-06-08 | 2006-06-09 | 41 |  |  | 5d | 0d |  | Member | 16h |  |
| 43 | 1.8.1.4 | Creation of Dev Distro |  | 1d | 2006-06-12 | 2006-06-12 | 42 |  |  | 5d | 0d |  | Component Manager | 8h |  |
| 44 | 1.8.1.5 | Development Posting |  | 6d | 2006-06-13 | 2006-06-20 | 43 |  |  | 5d | 0d | start no earlier than 2005-03-30 | Member | 48h |  |
| 45 | 1.8.1.6 | Development Review |  | 4d | 2006-06-21 | 2006-06-26 | 44 |  |  | 5d | 0d |  | Member | 32h |  |
| 46 | 1.8.1.7 | Development Final Fixes |  | 2d | 2006-06-27 | 2006-06-28 | 45 |  |  | 5d | 0d | finish no earlier than 2005-04-06 | Member | 16h |  |
| 47 | 1.8.1.8 | Post to Catalog |  | 1d | 2006-06-29 | 2006-06-29 | 46 |  |  | 5d |  |  | Component Manager | 8h |  |
| 48 | 1.8.2 | **Cached Web Element Tag** |  | 26d | 2006-05-25 | 2006-06-29 |  |  |  | 5d |  |  |  | 208h |  |
| 49 | 1.8.2.1 | Design Posting |  | 6d | 2006-05-25 | 2006-06-01 |  |  |  | 5d | 0d | start no earlier than 2006-05-25 | Member | 48h |  |
| 50 | 1.8.2.2 | Design Review |  | 4d | 2006-06-02 | 2006-06-07 | 49 |  |  | 5d | 0d | finish no earlier than 2005-03-21 | Member | 32h |  |
| 51 | 1.8.2.3 | Design Final Fixes |  | 2d | 2006-06-08 | 2006-06-09 | 50 |  |  | 5d | 0d |  | Member | 16h |  |
| 52 | 1.8.2.4 | Creation of Dev Distro |  | 1d | 2006-06-12 | 2006-06-12 | 51 |  |  | 5d | 0d |  | Component Manager | 8h |  |
| 53 | 1.8.2.5 | Development Posting |  | 6d | 2006-06-13 | 2006-06-20 | 52 |  |  | 5d | 0d | start no earlier than 2005-03-30 | Member | 48h |  |
| 54 | 1.8.2.6 | Development Review |  | 4d | 2006-06-21 | 2006-06-26 | 53 |  |  | 5d | 0d |  | Member | 32h |  |
| 55 | 1.8.2.7 | Development Final Fixes |  | 2d | 2006-06-27 | 2006-06-28 | 54 |  |  | 5d | 0d | finish no earlier than 2005-04-06 | Member | 16h |  |
| 56 | 1.8.2.8 | Post to Catalog |  | 1d | 2006-06-29 | 2006-06-29 | 55 |  |  | 5d |  |  | Component Manager | 8h |  |

| ID | WBS | Task | Duration | Start | Finish | Predecessors | Total slack | Free slack | Constraint | Resources | Work |
| --- | --- | --- | --- | --- | --- | --- | --- | --- | --- | --- | --- |
| 57 | 1.8.3 | **Database Abstraction 1.1** | 26d | 2006-05-25 | 2006-06-29 |  | 5d |  |  |  | 208h |
| 58 | 1.8.3.1 | Design Posting | 6d | 2006-05-25 | 2006-06-01 |  | 5d | 0d | start no earlier than 2006-05-25 | Member | 48h |
| 59 | 1.8.3.2 | Design Review | 4d | 2006-06-02 | 2006-06-07 | 58 | 5d | 0d | finish no earlier than 2005-03-21 | Member | 32h |
| 60 | 1.8.3.3 | Design Final Fixes | 2d | 2006-06-08 | 2006-06-09 | 59 | 5d | 0d |  | Member | 16h |
| 61 | 1.8.3.4 | Creation of Dev Distro | 1d | 2006-06-12 | 2006-06-12 | 60 | 5d | 0d |  | Component Manager | 8h |
| 62 | 1.8.3.5 | Development Posting | 6d | 2006-06-13 | 2006-06-20 | 61 | 5d | 0d | start no earlier than 2005-03-30 | Member | 48h |
| 63 | 1.8.3.6 | Development Review | 4d | 2006-06-21 | 2006-06-26 | 62 | 5d | 0d |  | Member | 32h |
| 64 | 1.8.3.7 | Development Final Fixes | 2d | 2006-06-27 | 2006-06-28 | 63 | 5d | 0d | finish no earlier than 2005-04-06 | Member | 16h |
| 65 | 1.8.3.8 | Post to Catalog | 1d | 2006-06-29 | 2006-06-29 | 64 | 5d |  |  | Component Manager | 8h |
| 66 | 1.8.4 | **Search Builder - Bug Fix** | 26d | 2006-05-25 | 2006-06-29 |  | 5d |  |  |  | 208h |
| 67 | 1.8.4.1 | Design Posting | 6d | 2006-05-25 | 2006-06-01 |  | 5d | 0d | start no earlier than 2006-05-25 | Member | 48h |
| 68 | 1.8.4.2 | Design Review | 4d | 2006-06-02 | 2006-06-07 | 67 | 5d | 0d | finish no earlier than 2005-03-21 | Member | 32h |
| 69 | 1.8.4.3 | Design Final Fixes | 2d | 2006-06-08 | 2006-06-09 | 68 | 5d | 0d |  | Member | 16h |
| 70 | 1.8.4.4 | Creation of Dev Distro | 1d | 2006-06-12 | 2006-06-12 | 69 | 5d | 0d |  | Component Manager | 8h |
| 71 | 1.8.4.5 | Development Posting | 6d | 2006-06-13 | 2006-06-20 | 70 | 5d | 0d | start no earlier than 2005-03-30 | Member | 48h |
| 72 | 1.8.4.6 | Development Review | 4d | 2006-06-21 | 2006-06-26 | 71 | 5d | 0d |  | Member | 32h |
| 73 | 1.8.4.7 | Development Final Fixes | 2d | 2006-06-27 | 2006-06-28 | 72 | 5d | 0d | finish no earlier than 2005-04-06 | Member | 16h |
| 74 | 1.8.4.8 | Post to Catalog | 1d | 2006-06-29 | 2006-06-29 | 73 | 5d |  |  | Component Manager | 8h |
| 75 | 1.8.5 | **Components Round 2** | 26d | 2006-06-01 | 2006-07-06 |  | 0d |  |  |  | 208h |
| 76 | 1.8.5.1 | Design Posting | 6d | 2006-06-01 | 2006-06-08 |  | 0d |  | start no earlier than 2006-06-01 | Member | 48h |
| 77 | 1.8.5.2 | Design Review | 4d | 2006-06-09 | 2006-06-14 | 76 | 0d |  | finish no earlier than 2005-03-21 | Member | 32h |
| 78 | 1.8.5.3 | Design Final Fixes | 2d | 2006-06-15 | 2006-06-16 | 77 | 0d |  |  | Member | 16h |
| 79 | 1.8.5.4 | Creation of Dev Distro | 1d | 2006-06-19 | 2006-06-19 | 78 | 0d |  |  | Component Manager | 8h |
| 80 | 1.8.5.5 | Development Posting | 6d | 2006-06-20 | 2006-06-27 | 79 | 0d |  | start no earlier than 2005-03-30 | Member | 48h |
| 81 | 1.8.5.6 | Development Review | 4d | 2006-06-28 | 2006-07-03 | 80 | 0d |  |  | Member | 32h |
| 82 | 1.8.5.7 | Development Final Fixes | 2d | 2006-07-04 | 2006-07-05 | 81 | 0d |  | finish no earlier than 2005-04-06 | Member | 16h |
| 83 | 1.8.5.8 | Post to Catalog | 1d | 2006-07-06 | 2006-07-06 | 82 | 0d |  |  | Component Manager | 8h |

| ID | WBS | Task | Duration | Start | Finish | Predecessors | Total slack | Constraint | Resources | Work | Text1 |
| --- | --- | --- | --- | --- | --- | --- | --- | --- | --- | --- | --- |
| 84 | 1.9 | **Assembly Competitions** | 653d | 2004-01-27 | 2006-07-27 |  | 0d |  |  | 192h |  |
| 85 | 1.9.1 | **Setup** | 638d | 2004-01-27 | 2006-07-06 |  | 15d |  |  |  |  |
| 86 | 1.9.1.1 | Divide Use Cases for Competitions | 1d | 2006-06-16 | 2006-06-16 | 38FS-15d | 29d | start no earlier than 2006-03-29 |  |  |  |
| 87 | 1.9.1.2 | TopCoder Website Content Creation | 5d | 2006-06-30 | 2006-07-06 | 38FS-5d | 15d |  |  |  |  |
| 88 | 1.9.1.3 | TopCoder Website Informaiton Posted | 1d | 2006-06-23 | 2006-06-23 | 38FS-10d | 0d | start no earlier than 2006-05-17 |  |  |  |
| 89 | 1.9.1.4 | Package Components | 1d | 2004-01-27 | 2004-01-27 |  | 633d |  |  |  |  |
| 90 | 1.9.2 | **Test Case Development** | 5d | 2006-06-26 | 2006-06-30 |  | 0d |  |  | 32h |  |
| 91 | 1.9.2.1 | Submit tests | 4d | 2006-06-26 | 2006-06-29 | 88 | 0d | start no earlier than 2006-03-22 | test case participants | 32h |  |
| 92 | 1.9.2.2 | Screen test cases | 1d | 2006-06-30 | 2006-06-30 | 91 | 0d |  |  |  |  |
| 93 | 1.9.3 | Team Formation | 10d | 2006-06-26 | 2006-07-07 | 88 | 14d |  |  |  |  |
| 94 | 1.9.4 | **Development** | 19d | 2006-07-03 | 2006-07-27 |  | 0d |  |  | 160h |  |
| 95 | 1.9.4.1 | **Opening Round** | 19d | 2006-07-03 | 2006-07-27 |  | 0d |  |  | 160h |  |
| 96 | 1.9.4.1.1 | **Team Development** | 6d | 2006-07-03 | 2006-07-10 |  | 0d |  |  | 48h |  |
| 97 | 1.9.4.1.1.1 | **Development of Use Cases** | 6d | 2006-07-03 | 2006-07-10 |  | 0d |  | All Teams | 48h | prototype conversion, sequence diagram implementation |
| 98 | 1.9.4.1.1.1.1 | Create Unit Tests | 3d | 2006-07-03 | 2006-07-05 | 89, 90 | 0d | start no earlier than 2006-03-28 |  |  |  |
| 99 | 1.9.4.1.1.1.2 | Convert Prototype | 3d | 2006-07-03 | 2006-07-05 | 89, 90 | 0d | start no earlier than 2006-03-29 |  |  |  |
| 100 | 1.9.4.1.1.1.3 | Configure components | 3d | 2006-07-03 | 2006-07-05 | 89, 90 | 0d | start no earlier than 2006-03-29 |  |  |  |
| 101 | 1.9.4.1.1.1.4 | Test | 3d | 2006-07-06 | 2006-07-10 | 98, 99, 100 | 0d |  |  |  |  |
| 102 | 1.9.4.1.2 | **Test case challenge** | 2d | 2006-07-11 | 2006-07-12 | 101 | 0d |  | All Captains | 56h |  |
| 103 | 1.9.4.1.2.1 | Submit Challenges | 1d | 2006-07-11 | 2006-07-11 |  | 0d |  |  |  |  |
| 104 | 1.9.4.1.2.2 | Appeals response | 1d | 2006-07-12 | 2006-07-12 | 103 | 0d |  | Reviewer3; Reviewer2; Reviewer1; Assembly Manager; Architect | 40h |  |
| 105 | 1.9.4.1.3 | **Review** | 11d | 2006-07-13 | 2006-07-27 |  | 0d |  |  | 56h |  |
| 106 | 1.9.4.1.3.1 | Score Testcases | 1d | 2006-07-13 | 2006-07-13 | 102 | 1d |  | DE | 8h |  |
| 107 | 1.9.4.1.3.2 | Score Submissions | 2d | 2006-07-13 | 2006-07-14 | 102 | 0d |  | DE | 16h |  |
| 108 | 1.9.4.1.3.3 | Review Code | 2d | 2006-07-17 | 2006-07-18 | 106, 107 | 0d |  | Review Team | 16h |  |
| 109 | 1.9.4.1.3.4 | Appeals | 1d | 2006-07-19 | 2006-07-19 | 108 | 0d |  | Review Team | 8h |  |
| 110 | 1.9.4.1.3.5 | Appeals Response | 1d | 2006-07-20 | 2006-07-20 | 109 | 0d |  | Review Team | 8h |  |
| 111 | 1.9.4.1.3.6 | Final Fixes | 3d | 2006-07-21 | 2006-07-25 | 110 | 0d |  |  |  |  |
| 112 | 1.9.4.1.3.7 | Final Review | 1d | 2006-07-26 | 2006-07-26 | 111 | 0d |  |  |  |  |
| 113 | 1.9.4.1.3.8 | PM Review/Certification | 1d | 2006-07-27 | 2006-07-27 | 112 | 0d |  |  |  |  |

| ID | WBS | Task | Type | Duration | Start | Finish | Predecessors | Total slack | Free slack | Constraint | Resources | Work |
| --- | --- | --- | --- | --- | --- | --- | --- | --- | --- | --- | --- | --- |
| 114 | 1.10 | **Deployment** |  | 13d | 2006-07-28 | 2006-08-15 |  | 16d | 0d |  |  | 152h |
| 115 | 1.10.1 | Deployment |  | 4d | 2006-07-28 | 2006-08-02 | 84 | 16d | 0d | finish no earlier than 2005-05-27 | Project Manager; Application Assembler 1 | 64h |
| 116 | 1.10.2 | **Testing Iteration** |  | 9d | 2006-08-03 | 2006-08-15 |  | 16d |  |  |  | 88h |
| 117 | 1.10.2.1 | Test Plan Execution |  | 3d | 2006-08-03 | 2006-08-07 | 115 | 16d | 0d | finish no earlier than 2005-06-03 | Project Manager; Application Assembler 1 | 48h |
| 118 | 1.10.2.2 | User Acceptance Testing | milestone | 5d | 2006-08-08 | 2006-08-14 | 117 | 16d | 0d | finish no earlier than 2005-06-03 | Customer | 40h |
| 119 | 1.10.2.3 | PM Certification |  | 1d | 2006-08-15 | 2006-08-15 | 118 | 16d |  |  |  |  |
| 120 | 1.11 | **Support** |  | 30d | 2006-07-28 | 2006-09-07 |  | 0d |  |  |  | 240h |
| 121 | 1.11.1 | Capture DRs |  | 15d | 2006-07-28 | 2006-08-17 | 84 | 0d |  |  | Project Manager | 120h |
| 122 | 1.11.2 | Release Fix |  | 15d | 2006-08-18 | 2006-09-07 | 121 | 0d |  |  | Project Manager | 120h |
| 123 | 1.12 | Send out how-to info to users |  | 1d | 2006-07-28 | 2006-07-28 | 113 | 29d |  |  |  |  |
| 124 | 1.13 | Beta Release to internal users |  | 1d | 2006-08-16 | 2006-08-16 | 114 | 16d |  |  |  |  |
